# BLUEsatProjectPlan

Schedule from MS Project, 2012-01-14 to 2013-02-28, scheduled back from the finish, 24 hours a day.

## Calendars

- 24 Hours: Mon-Sun 00:00-24:00.

## Resources

| Resource |
| --- |
| PCB Team |
| Mechanical Team |
| Radio Team |
| Software Team |
| Payload Team |
| Executive |
| Power Team |
| Testing Team |
| External |

## Schedule

| ID | WBS | Task | Type | Duration | Start | Finish | Predecessors | Constraint | Resources | Work |
| --- | --- | --- | --- | --- | --- | --- | --- | --- | --- | --- |
| 1 | 1 | **Documentation** |  | 411.38d | 2012-01-14 | 2013-02-28 |  | as late as possible |  |  |
| 2 | 1.1 | <New Task> | manual | 0.33d | 2013-02-28 | 2013-02-28 |  |  |  |  |
| 3 | 2 | **Design, Testing and Analysis** |  | 30w | 2012-01-14 | 2012-08-11 |  | as late as possible |  | 92757h |
| 4 | 2.1 | **Integration Rig (Flatsat)** |  | 6w | 2012-01-14 | 2012-02-25 |  | as late as possible | Executive; Payload Team; PCB Team; Power Team; Radio Team; Software Team; Testing Team | 7056h |
| 5 | 2.1.1 | Driver Development | manual | 3w | 2012-01-14 | 2012-02-04 |  |  |  |  |
| 6 | 2.1.2 | BCR Prototype creation and testing | manual | 3w | 2012-01-14 | 2012-02-04 |  | as late as possible |  |  |
| 7 | 2.1.3 | Bus board routing | manual | 3w | 2012-01-14 | 2012-02-04 |  | as late as possible |  |  |
| 8 | 2.1.4 | Rig Construction | manual | 3w | 2012-02-04 | 2012-02-25 | 6, 7 | as late as possible |  |  |
| 9 | 2.1.5 | Communications Testing | manual | 3w | 2012-02-04 | 2012-02-25 | 5, 8SS | as late as possible |  |  |
| 10 | 2.2 | **Feasbility Investigation** |  | 7.05w | 2012-02-25 | 2012-04-14 |  | as late as possible | Executive | 3555h |
| 11 | 2.2.1 | Standalone Camera evaluation | manual | 7.05w | 2012-02-25 | 2012-04-14 |  |  | Executive | 1185h |
| 12 | 2.2.2 | Namuru Evaluation | manual | 7.05w | 2012-02-25 | 2012-04-14 |  | as late as possible | Executive | 1185h |
| 13 | 2.3 | **Design Finalisation** |  | 24.05w | 2012-02-25 | 2012-08-11 | 4SS | as late as possible | Mechanical Team; Payload Team; PCB Team; Power Team; Radio Team; Software Team | 54567h |
| 14 | 2.3.1 | Software Application Level Dvelopment | manual | 168.38d | 2012-02-25 | 2012-08-11 |  | as late as possible | Software Team | 4041h |
| 15 | 2.3.2 | LTP development and testing | manual | 168.38d | 2012-02-25 | 2012-08-11 |  | as late as possible | Software Team | 4041h |
| 16 | 2.3.3 | Beaglebone L4 software development | manual | 168.38d | 2012-02-25 | 2012-08-11 |  | as late as possible | Payload Team; Software Team | 8082h |
| 17 | 2.3.4 | Beagle Bone design integration | manual | 8w | 2012-02-25 | 2012-04-21 |  | as late as possible | PCB Team; Payload Team | 2688h |
| 18 | 2.3.5 | Battery Charge design finalisation | manual | 8w | 2012-02-25 | 2012-04-21 |  | as late as possible | Power Team | 1344h |
| 19 | 2.3.6 | Antennae Foothoold, Mounting and Material | manual | 8w | 2012-03-24 | 2012-05-19 |  | as late as possible | Mechanical Team; Radio Team | 2688h |
| 20 | 2.3.7 | Solar Panel Routing and Mounting | manual | 42.38d | 2012-04-06 | 2012-05-19 |  | as late as possible | Power Team; Mechanical Team | 2034h |
| 21 | 2.3.8 | Telemetry sensor mounting and distribution | manual | 28.38d | 2012-04-21 | 2012-05-19 |  | as late as possible | PCB Team | 681h |
| 22 | 2.3.9 | Wiring Harness Design | manual | 4.05w | 2012-05-19 | 2012-06-16 | 20 | as late as possible | Mechanical Team; PCB Team | 1362h |
| 23 | 2.3.10 | Battery Mount Design | manual | 6w | 2012-05-19 | 2012-06-30 | 20 | as late as possible | Power Team; Mechanical Team | 2016h |
| 24 | 2.3.11 | Tray 2 PCB Layout and Routing | manual | 4w | 2012-06-16 | 2012-07-14 | 22, 18 |  | PCB Team | 672h |
| 25 | 2.3.12 | Tray 4 PCB Layout and Routing | manual | 4w | 2012-07-14 | 2012-08-11 | 12, 17 | as late as possible | PCB Team | 672h |

| ID | WBS | Task | Type | Duration | Start | Finish | Predecessors | Total slack | Free slack | Constraint | Resources | Work |
| --- | --- | --- | --- | --- | --- | --- | --- | --- | --- | --- | --- | --- |
| 26 | 2.4 | **Testing and Evaluation** |  | 24.05w | 2012-02-25 | 2012-08-11 |  |  |  | as late as possible | Testing Team; Radio Team | 13458h |
| 27 | 2.4.1 | Bent Pipe RF testing | manual | 2w | 2012-02-25 | 2012-03-10 |  |  |  | as late as possible | Radio Team | 336h |
| 28 | 2.4.2 | Telecommand Testing | manual | 6w | 2012-03-10 | 2012-04-21 |  |  |  | as late as possible | Radio Team | 1008h |
| 29 | 2.4.3 | Regulator and LDO characterisation | manual | 4w | 2012-02-25 | 2012-03-24 |  |  |  | as late as possible | Testing Team | 672h |
| 30 | 2.4.4 | Communicaitions power characterisation | manual | 4w | 2012-03-24 | 2012-04-21 |  |  |  | as late as possible | Testing Team | 672h |
| 31 | 2.4.5 | Telemetry testing and power characterisation | manual | 4w | 2012-04-21 | 2012-05-19 |  |  |  | as late as possible | Testing Team | 672h |
| 32 | 2.4.6 | CSC power characterisation | manual | 4w | 2012-05-19 | 2012-06-16 |  |  |  | as late as possible | Testing Team | 672h |
| 33 | 2.4.7 | Battery testing and charecterisation | manual | 4w | 2012-06-16 | 2012-07-14 | 18 |  |  |  | Testing Team | 672h |
| 34 | 2.4.8 | Beagle Bone power charecterisation | manual | 4w | 2012-07-07 | 2012-08-04 | 17 |  |  | as late as possible | Testing Team | 672h |
| 35 | 2.5 | **Simulation** |  | 30.05w | 2012-01-14 | 2012-08-11 |  |  |  | as late as possible | Mechanical Team | 14121h |
| 36 | 2.5.1 | Structural and Thermal model creation | manual | 3w | 2012-01-14 | 2012-02-04 |  |  |  | as late as possible | Mechanical Team | 504h |
| 37 | 2.5.2 | Structural stress research and Investigation | manual | 10w | 2012-02-04 | 2012-04-14 |  |  |  | as late as possible | Mechanical Team | 1680h |
| 38 | 2.5.3 | Thermal Environmental research | manual | 10w | 2012-02-04 | 2012-04-14 |  |  |  | as late as possible | Mechanical Team; Testing Team | 3360h |
| 39 | 2.5.4 | Model Touch up | manual | 9w | 2012-04-14 | 2012-06-16 | 36, 37, 38 |  |  | as late as possible | Mechanical Team | 1512h |
| 40 | 2.5.5 | Component thermal research | manual | 3w | 2012-06-16 | 2012-07-07 | 29, 30, 31, 32 |  |  | as late as possible | Mechanical Team | 504h |
| 41 | 2.5.6 | Final structural simulation | manual | 4w | 2012-07-07 | 2012-08-04 | 39, 37 |  |  | as late as possible | Mechanical Team | 672h |
| 42 | 2.5.7 | Final thermal simulation | manual | 4w | 2012-07-07 | 2012-08-04 | 38, 40, 39 |  |  | as late as possible | Mechanical Team | 672h |
| 43 | 2.5.8 | Critical Design Review |  | 1w | 2012-08-04 | 2012-08-11 |  | 203.38d | 0d | as late as possible | Executive | 168h |
| 44 | 3 | **Production and Final Functional Testing** |  | 12w | 2012-08-18 | 2012-11-10 |  |  |  | as late as possible | Executive; External; Mechanical Team; Payload Team; PCB Team; Power Team; Radio Team; Software Team; Testing Team | 34944h |
| 45 | 3.1 | PCB Manufacture | manual | 4w | 2012-08-18 | 2012-09-15 | 24, 25 |  |  |  | External | 672h |
| 46 | 3.2 | Critical Systems Software Testing | manual | 4w | 2012-08-18 | 2012-09-15 |  |  |  | as late as possible | Software Team | 672h |
| 47 | 3.3 | Communications Testing (Hardware Level) | manual | 4w | 2012-08-18 | 2012-09-15 |  |  |  | as late as possible | Radio Team | 672h |
| 48 | 3.4 | Communications Testing (Software Level) | manual | 4w | 2012-09-15 | 2012-10-13 | 46, 47 |  |  | as late as possible | Software Team; Radio Team | 1344h |
| 49 | 3.5 | PCB Population | manual | 6w | 2012-09-15 | 2012-10-27 | 45 |  |  | as late as possible | Payload Team; PCB Team; Power Team; Radio Team; Software Team; Testing Team | 6048h |
| 50 | 3.6 | Telemetry testing and calibration | manual | 4w | 2012-10-06 | 2012-11-03 | 49SS |  |  | as late as possible | PCB Team; Software Team | 1344h |
| 51 | 3.7 | Satellite Assembly | manual | 5w | 2012-09-29 | 2012-11-03 | 49SS |  |  | as late as possible | Mechanical Team; Payload Team; PCB Team; Power Team; Radio Team; Software Team; Testing Team | 5880h |
| 52 | 3.8 | Test Readiness Review | manual | 1w | 2012-11-03 | 2012-11-10 |  |  |  | as late as possible | Executive | 168h |

| ID | WBS | Task | Type | Duration | Start | Finish | Constraint |
| --- | --- | --- | --- | --- | --- | --- | --- |
| 53 | 4 | **Qualification testing** |  | 15.77w | 2012-11-10 | 2013-02-28 | as late as possible |
| 54 | 4.1 | Initial Functional Test | manual | 1w | 2012-11-11 | 2012-11-18 | as late as possible |
| 55 | 4.2 | Thermal Cycling Test | manual | 1w | 2012-11-18 | 2012-11-25 | as late as possible |
| 56 | 4.3 | Thermal Vacuum Testing Pt 1 | manual | 3w | 2012-11-25 | 2012-12-16 | as late as possible |
| 57 | 4.4 | Christmas | manual | 3w | 2012-12-16 | 2013-01-06 |  |
| 58 | 4.5 | Thermal Vacuum Testing Pt 2 | manual | 4.62w | 2013-01-06 | 2013-02-07 | as late as possible |
| 59 | 4.6 | Mechanical Testing | manual | 1w | 2013-02-07 | 2013-02-14 | as late as possible |
| 60 | 4.7 | EMC and ESD testing | manual | 1w | 2013-02-14 | 2013-02-21 | as late as possible |
| 61 | 4.8 | Final Functional Test | manual | 1w | 2013-02-21 | 2013-02-28 | as late as possible |
| 62 | 5 | **Delivery and Launch** |  | 3.77w | 2013-02-02 | 2013-02-28 | as late as possible |
| 63 | 5.1 | <New Task> | manual | 1d | 2013-02-27 | 2013-02-28 | as late as possible |
